# MS-Projet_file

Schedule from MS Project, 2021-10-11 to 2022-02-04, costs in $, A marks actual dates.

## Calendars

- Standard: Mon-Fri 08:00-12:00, 13:00-17:00; Sat-Sun off.

## Resources

| Resource | Rate |
| --- | --- |
| Project Manager | 38 |
| QA | 20 |
| Structure Architech | 40 |
| UI/UX Designer | 30 |
| Test Lead | 30 |
| Developer | 25 |
| Tester | 20 |
| Physical Database | 200 |
| Test Software Licenses |  |
| Hosting | 1300 |
| Domain | 700 |

## Schedule

| ID | Task | Type | Duration | Start | Finish | Predecessors | Complete | Total slack | Free slack | Constraint | Resources | Work | Actual work | Cost | Actual cost |
| --- | --- | --- | --- | --- | --- | --- | --- | --- | --- | --- | --- | --- | --- | --- | --- |
| 1 | Evaluation and Recommendations |  | 1d | 2021-10-28 | 2021-10-28 |  |  | 71d |  | finish no earlier than 2021-10-11 | Project Manager | 8h |  | 304 |  |
| 2 | Develop Project Charter |  | 1d | 2021-10-11 A | 2021-10-11 A |  | 100% |  |  |  | Project Manager | 8h | 8h | 304 | 304 |
| 3 | Submit Project Charter | milestone | 0d | 2021-10-11 | 2021-10-11 | 2 |  | 69d | 0d |  | Project Manager |  |  |  |  |
| 4 | Create Sponsor Review Charter |  | 1d | 2021-10-29 | 2021-10-29 |  |  | 70d |  |  | Project Manager | 8h |  | 304 |  |
| 5 | Sign Project Charter |  | 1d | 2021-11-01 | 2021-11-01 | 3 |  | 69d |  |  | Project Manager | 8h |  | 304 |  |
| 6 | Create Scope Statement |  | 1w | 2021-10-21 | 2021-10-27 |  |  | 72d |  |  | Project Manager | 40h |  | 1,520 |  |
| 7 | Determine Project Team |  | 1d | 2021-10-12 | 2021-10-12 |  |  | 67d | 0d |  | Project Manager | 8h |  | 304 |  |
| 8 | Kickoff Meeting |  | 1d | 2021-11-02 | 2021-11-02 | 7FS+1d |  | 68d |  |  | Project Manager | 8h |  | 304 |  |
| 9 | Develop Project Plan |  | 1w | 2021-10-13 | 2021-10-19 |  |  | 77d | 0d |  | Project Manager | 40h |  | 1,520 |  |
| 10 | Submit Project Plan | milestone | 0d | 2021-10-19 | 2021-10-19 | 9 |  | 77d | 0d |  | Project Manager |  |  |  |  |
| 11 | Approve Project Plan | milestone | 0d | 2021-10-19 | 2021-10-19 | 10 |  | 77d | 0d |  | Project Manager |  |  |  |  |
| 12 | Execution-phase Kickoff Meeting |  | 1d | 2021-10-20 | 2021-10-20 | 11 |  | 77d |  |  | Project Manager | 8h |  | 304 |  |
| 13 | Validate User Requirements |  | 1w | 2021-10-11 | 2021-10-15 |  |  | 0d |  |  | QA | 40h |  | 800 |  |
| 14 | Design DB Structure |  | 1w | 2021-10-25 | 2021-10-29 | 13 |  | 10d | 0d |  | Structure Architech | 40h |  | 1,600 |  |
| 15 | Design Detailed DB |  | 1w | 2021-11-08 | 2021-11-12 | 14 |  | 10d | 0d |  | Structure Architech | 40h |  | 1,600 |  |
| 16 | Design Overview Functional Software Structure |  | 1w | 2021-10-18 | 2021-10-22 | 13 |  | 5d | 0d |  | Structure Architech | 40h |  | 1,600 |  |
| 17 | Design Detailed Functional Components |  | 1w | 2021-11-01 | 2021-11-05 | 16 |  | 5d | 0d |  | Structure Architech | 40h |  | 1,600 |  |
| 18 | Design UI/UX |  | 2w | 2021-10-18 | 2021-10-29 | 13 |  | 0d |  |  | UI/UX Designer | 80h |  | 2,400 |  |
| 19 | Plan Test |  | 1w | 2021-10-18 | 2021-10-22 | 13 |  | 70d | 0d |  | Test Lead | 40h |  | 1,200 |  |
| 20 | Design Test |  | 1w | 2021-10-25 | 2021-10-29 | 19 |  | 70d |  |  | Test Lead | 40h |  | 1,200 |  |
| 21 | Procure Software |  | 2d | 2021-11-15 | 2021-11-16 | 15, 17, 18 |  | 58d |  |  | Project Manager | 16h |  | 608 |  |
| 22 | Procure Hardware Specs |  | 2d | 2021-11-17 | 2021-11-18 | 15, 17, 18 |  | 56d |  |  | Project Manager; Physical Database | 16h |  | 808 |  |
| 23 | Develop Database |  | 1w | 2021-11-15 | 2021-11-19 | 15 |  | 10d | 0d |  | Developer | 40h |  | 1,000 |  |
| 24 | Develop Functions |  | 2w | 2021-11-08 | 2021-11-26 | 17 |  | 5d | 0d |  | Developer | 80h |  | 2,000 |  |
| 25 | Develop UI/UX |  | 2w | 2021-11-01 | 2021-12-03 | 18 |  | 0d |  |  | Developer | 80h |  | 2,000 |  |
| 26 | Install Development System |  | 1w | 2021-12-06 | 2021-12-10 | 23, 24, 25 |  | 40d |  |  | Developer; Physical Database [200%] | 40h |  | 1,400 |  |
| 27 | Test Database |  | 1w | 2021-11-22 | 2021-11-26 | 23 |  | 10d |  |  | Tester | 40h |  | 800 |  |
| 28 | Test Functions |  | 1w | 2021-11-29 | 2021-12-03 | 24 |  | 5d |  |  | Tester | 40h |  | 800 |  |
| 29 | Test UI/UX |  | 1w | 2021-12-06 | 2021-12-10 | 25 |  | 0d |  |  | Tester | 40h |  | 800 |  |
| 30 | Summarize Test Result |  | 5d | 2021-12-13 | 2021-12-17 | 27, 28, 29 |  | 0d |  |  | Tester; Test Software Licenses [0.1%] | 40h |  | 950 |  |
| 31 | Fix Bugs |  | 2w | 2021-12-20 | 2021-12-31 | 30 |  | 0d |  |  | Developer | 80h |  | 2,000 |  |
| 32 | Setup Deployment |  | 1w | 2022-01-03 | 2022-01-07 | 31 |  | 0d |  |  | Developer; Hosting | 40h |  | 2,300 |  |
| 33 | Deploy System |  | 3d | 2022-01-10 | 2022-01-12 | 32 |  | 0d |  |  | Developer; Hosting | 24h |  | 1,900 |  |
| 34 | Project Status Meetings |  | 1d | 2022-01-13 | 2022-01-13 | 33 |  | 0d |  |  | Project Manager | 8h |  | 304 |  |
| 35 | Summarize Risk |  | 3d | 2022-01-28 | 2022-02-01 | 34 |  | 3d |  |  | Project Manager | 24h |  | 912 |  |
| 36 | Create Update Plan |  | 1w | 2022-01-14 | 2022-01-20 | 34 |  | 0d |  |  | Project Manager | 40h |  | 1,520 |  |
| 37 | Procure Audit |  | 1d | 2022-01-21 | 2022-01-21 | 36 |  | 0d |  |  | Project Manager | 8h |  | 304 |  |
| 38 | Create Lessons Learned Document |  | 3d | 2022-02-02 | 2022-02-04 | 37 |  | 0d |  |  | Project Manager | 24h |  | 912 |  |
| 39 | Update Files/Records |  | 3d | 2022-01-24 | 2022-01-26 | 33 |  | 6d | 0d |  | Project Manager | 24h |  | 912 |  |
| 40 | Gain Formal Acceptance | milestone | 0d | 2022-01-12 | 2022-01-12 | 33 |  | 17d |  |  | Project Manager |  |  |  |  |
| 41 | Archive Files and Documents |  | 1d | 2022-01-27 | 2022-01-27 | 39 |  | 6d |  |  | Project Manager | 8h |  | 304 |  |
